# Team10Project

Schedule from MS Project, 2017-10-12 to 2017-11-30, A marks actual dates.

## Calendars

- Standard: Mon-Fri 08:00-12:00, 13:00-17:00; Sat-Sun off.

## Resources

| Resource |
| --- |
| Will |
| Thao |
| Andrew |
| Dana |
| Group |

## Schedule

| ID | WBS | Task | Type | Duration | Start | Finish | Predecessors | Complete | Remaining | Total slack | Free slack | Constraint | Deadline | Resources | Work | Actual work |
| --- | --- | --- | --- | --- | --- | --- | --- | --- | --- | --- | --- | --- | --- | --- | --- | --- |
| 1 | 1 | **Product Requirements** |  | 5d | 2017-10-12 A | 2017-10-18 A |  | 100% |  |  |  |  | 2017-10-18 |  | 160h | 160h |
| 2 | 1.1 | Review Product Requirements |  | 1d | 2017-10-12 A | 2017-10-18 A | 3 | 100% |  |  |  | start no later than 2017-10-18 |  | Andrew; Dana; Thao; Will | 32h | 32h |
| 3 | 1.2 | Requirement Document |  | 4d | 2017-10-12 A | 2017-10-17 A |  | 100% |  |  |  | finish no earlier than 2017-10-18 | 2017-10-18 | Andrew; Dana; Thao; Will | 128h | 128h |
| 4 | 2 | Basic Schematic |  | 4d | 2017-10-20 A | 2017-10-24 A | 1 | 100% |  |  |  |  |  | Andrew; Will [50%] | 48h | 48h |
| 5 | 3 | Final Schematic |  | 5d | 2017-10-29 A | 2017-11-03 | 4 | 75% | 1.25d | -0.25d | 0d |  |  | Andrew; Dana | 48h | 38h |
| 6 | 4 | Basic Layout |  | 5.75d | 2017-11-03 | 2017-11-08 | 5 |  |  | 0d |  | finish no later than 2017-11-08 |  | Andrew [50%]; Dana [50%] | 40h |  |
| 7 | 5 | Final Layout |  | 5d | 2017-11-08 | 2017-11-13 | 6 |  |  | 2d |  | finish no later than 2017-11-16 |  | Dana [50%]; Thao [50%] | 20h |  |
| 8 | 6 | **Prototype** |  | 15.6d | 2017-11-03 A | 2017-11-24 | 5 | 2% | 15.3d | 4.4d |  |  |  |  | 263.73h | 4h |
| 9 | 6.1 | Breadboard |  | 5d | 2017-11-03 A | 2017-11-07 | 5 | 10% | 4.5d | 8d | 3d |  |  | Thao [50%]; Will [50%] | 36h | 4h |
| 10 | 6.2 | **Prototype Debug** |  | 9.6d | 2017-11-12 | 2017-11-24 | 9, 23 |  |  | 4.4d |  |  |  |  | 227.73h |  |
| 11 | 6.2.1 | Test Plan |  | 2d | 2017-11-12 | 2017-11-14 |  |  |  | 4.4d | 0d |  |  | Andrew; Dana [50%]; Thao [50%]; Will | 32h |  |
| 12 | 6.2.2 | Test Plan Review |  | 2d | 2017-11-12 | 2017-11-14 |  |  |  | 4.4d | 0d |  |  | Andrew; Dana [50%]; Thao [50%]; Will | 26.4h |  |
| 13 | 6.2.3 | Power Source Stable |  | 4d | 2017-11-14 | 2017-11-18 | 11, 12 |  |  | 4.4d | 0d |  |  | Dana [50%]; Will [50%] | 32h |  |
| 14 | 6.2.4 | LED Matrix Output |  | 3d | 2017-11-14 | 2017-11-17 | 11, 12 |  |  | 5.4d | 0.4d |  |  | Andrew [50%]; Thao [50%]; Will [50%] | 36h |  |
| 15 | 6.2.5 | Accelerometer Input |  | 4d | 2017-11-14 | 2017-11-18 | 11, 12 |  |  | 4.4d | 0d |  |  | Andrew [50%]; Dana [50%] | 32h |  |
| 16 | 6.2.6 | Code Debug |  | 6d | 2017-11-18 | 2017-11-24 | 13, 14, 15 |  |  | 4.4d |  |  |  | Thao; Will; Dana [50%]; Andrew [50%] | 69.33h |  |
| 17 | 7 | Parts list |  | 1d | 2017-11-03 | 2017-11-04 |  |  |  | -0.25d | 0d | start no earlier than 2017-11-02 | 2017-11-03 | Dana | 8h |  |
| 18 | 8 | **Coding** |  | 10d | 2017-10-29 A | 2017-11-12 |  | 7% | 9.33d | 5d |  |  |  |  | 121.6h | 7.2h |
| 19 | 8.1 | Maze Code |  | 5d | 2017-10-29 A | 2017-11-02 |  | 8% | 4.6d | 6d | 1.6d |  |  | Will; Thao [50%] | 37.6h | 4.8h |
| 20 | 8.2 | Input/Output Code |  | 4d | 2017-10-29 A | 2017-11-06 |  | 15% | 3.4d | 4.4d | 0d |  |  | Thao [50%] | 16h | 2.4h |
| 21 | 8.3 | Test Plan |  | 2d | 2017-11-06 | 2017-11-08 | 19, 20 |  |  | 4.4d | 0d |  |  | Andrew [50%]; Dana [50%]; Thao; Will | 28h |  |
| 22 | 8.4 | Test Plan Review |  | 1d | 2017-11-08 | 2017-11-09 | 21 |  |  | 4.4d | 0d |  |  | Andrew; Dana [50%]; Thao [50%]; Will | 16h |  |
| 23 | 8.5 | Final Code |  | 3d | 2017-11-09 | 2017-11-12 | 19, 20, 21, 22 |  |  | 4.4d | 0d |  |  | Thao [50%]; Will [75%] | 24h |  |
| 24 | 9 | Order Parts for Sending to FAB | manual | 1d? | 2017-10-29 | 2017-10-29 |  |  |  |  |  |  | 2017-11-06 |  |  |  |
| 25 | 10 | Order Parts for Prototyping | manual | 1d? | 2017-10-29 | 2017-10-29 |  |  |  |  |  |  | 2017-11-02 |  |  |  |

| ID | WBS | Task | Duration | Start | Finish | Predecessors | Total slack | Constraint | Resources | Work |
| --- | --- | --- | --- | --- | --- | --- | --- | --- | --- | --- |
| 26 | 11 | **Final Debug** | 4d | 2017-11-27 | 2017-11-30 |  | 0d | start no earlier than 2017-11-27 |  | 112h |
| 27 | 11.1 | Test Plan Final | 1d | 2017-11-27 | 2017-11-27 |  | 1d |  | Andrew; Dana; Thao; Will | 32h |
| 28 | 11.2 | Test Plan Review | 1d | 2017-11-28 | 2017-11-28 |  | 0d |  | Andrew; Dana; Thao; Will | 32h |
| 29 | 11.3 | Meet Power Requirements | 2d | 2017-11-29 | 2017-11-30 | 27, 28 | 0d |  | Andrew | 16h |
| 30 | 11.4 | Game Functions | 2d | 2017-11-29 | 2017-11-30 | 27, 28 | 0d |  | Will; Thao | 32h |
